# 一体化、三平台大经营AI智能管理系统

Schedule from a web Gantt chart, 2026-01-01 to 2026-09-30.
Saturdays and Sundays are off

## Schedule

| ID | WBS | Task | Type | Duration | Start | Finish | Complete | Status |
| --- | --- | --- | --- | --- | --- | --- | --- | --- |
| 2 | 1 | **项目启动** |  | 42d | 2026-01-01 | 2026-02-27 | 100% |  |
| 3 | 1.1 | 项目启动 |  | 14d | 2026-01-01 | 2026-01-20 | 100% | done |
| 4 | 1.2 | 组建项目团队 |  | 28d | 2026-01-21 | 2026-02-27 | 100% | done |
| 5 | 2 | **需求分析** |  | 64d | 2026-02-02 | 2026-04-30 | 59% |  |
| 6 | 2.1 | **功能分析** |  | 46d | 2026-02-02 | 2026-04-06 | 100% | done |
| 7 | 2.1.1 | 大经营管理系统 |  | 29d | 2026-02-02 | 2026-03-12 | 100% | done |
| 8 | 2.1.2 | 一体化决策组织平台 |  | 16d | 2026-03-09 | 2026-03-30 | 100% | done |
| 9 | 2.1.3 | 规范化协作机制平台 |  | 21d | 2026-03-09 | 2026-04-06 | 100% | done |
| 10 | 2.1.4 | 模块化管理指标平台 |  | 21d | 2026-03-09 | 2026-04-06 | 100% | done |
| 11 | 2.1.5 | 通用功能 |  | 16d | 2026-03-09 | 2026-03-30 | 100% | done |
| 12 | 2.1.6 | 移动端APP |  | 16d | 2026-03-09 | 2026-03-30 | 100% | done |
| 13 | 2.2 | **文档编制** |  | 42d | 2026-03-02 | 2026-04-28 | 82% |  |
| 14 | 2.2.1 | 需求规格说明书编制 |  | 21d | 2026-03-02 | 2026-03-30 | 100% | done |
| 15 | 2.2.2 | 概要设计说明书编制 | fixed start | 22d | 2026-03-10 | 2026-04-08 | 65% | suspended |
| 16 | 2.3 | **内外部接口需求分析** |  | 45d | 2026-02-27 | 2026-04-30 | 21% |  |
| 17 | 2.3.1 | 4A（登录认证） |  | 20d | 2026-04-01 | 2026-04-28 | 50% |  |
| 18 | 2.3.2 | MDM（组织/人员） |  | 44d | 2026-02-27 | 2026-04-29 | 50% |  |
| 19 | 2.3.3 | 国家能源集团数据中心 |  | 44d | 2026-02-27 | 2026-04-29 |  |  |
| 20 | 2.3.4 | 山西省电力交易中心系统 |  | 45d | 2026-02-27 | 2026-04-30 |  |  |
| 21 | 2.4 | **文档修订** |  | 3d | 2026-04-06 | 2026-04-08 | 35% | suspended |
| 22 | 2.4.1 | 需求规格说明书修订 |  | 3d | 2026-04-06 | 2026-04-08 | 70% | suspended |
| 23 | 2.4.2 | 相关文档修订 |  | 3d | 2026-04-06 | 2026-04-08 |  | suspended |
| 24 | 3 | **产品设计** |  | 68d | 2026-01-01 | 2026-04-06 | 75% |  |
| 25 | 3.1 | 架构设计 |  | 6d | 2026-02-26 | 2026-03-05 | 100% | done |

Notes:
- 15: 需参考需规终版内容完善
- 17: 登录认证接口调研
- 19: 获取生产、财务、营销、电量、交易、对标等基础数据；同步经营指标、分析结果
- 20: 获取现货交易数据、市场价格数据、结算数据
- 22: 因部分原型设计未完成 导致需规未完成修订
- 25: 经调研后需要调整架构 推理服务器需要调整具体作用

| ID | WBS | Task | Duration | Start | Finish | Complete | Status |
| --- | --- | --- | --- | --- | --- | --- | --- |
| 26 | 3.2 | **原型设计** | 42d | 2026-02-02 | 2026-03-31 | 81% |  |
| 27 | 3.2.1 | 大经营管理系统 | 27d | 2026-02-02 | 2026-03-10 | 100% |  |
| 28 | 3.2.2 | 一体化决策组织平台 | 16d | 2026-03-09 | 2026-03-30 | 100% |  |
| 29 | 3.2.3 | 规范化协作机制平台 | 17d | 2026-03-09 | 2026-03-31 | 70% | suspended |
| 30 | 3.2.4 | 模块化管理指标平台 | 17d | 2026-03-09 | 2026-03-31 | 30% | suspended |
| 31 | 3.2.5 | 通用功能 | 10d | 2026-03-09 | 2026-03-20 | 90% | suspended |
| 32 | 3.2.6 | 移动端APP | 7d | 2026-03-23 | 2026-03-31 | 100% | done |
| 33 | 3.3 | 数据库设计 | 11d | 2026-03-23 | 2026-04-06 | 10% | suspended |
| 34 | 4 | **功能研发** | 100d | 2026-03-16 | 2026-07-31 | 5% |  |
| 35 | 4.1 | **环境准备** | 24d | 2026-03-16 | 2026-04-16 | 61% |  |
| 36 | 4.1.1 | 研发环境 | 7d | 2026-03-23 | 2026-03-31 | 100% | done |
| 37 | 4.1.2 | 测试环境 | 12d | 2026-03-16 | 2026-03-31 | 100% | done |
| 38 | 4.1.3 | 生产环境 | 12d | 2026-03-16 | 2026-03-31 |  |  |
| 39 | 4.2 | 详细设计说明书编制 | 10d | 2026-04-06 | 2026-04-17 |  | suspended |
| 40 | 4.3 | **功能研发** | 98d | 2026-03-18 | 2026-07-31 | 2% |  |
| 41 | 4.3.1 | **大经营管理系统** | 58d | 2026-04-06 | 2026-06-24 |  |  |
| 42 | 4.3.1.1 | 驾驶舱 | 16d | 2026-04-06 | 2026-04-27 |  | suspended |
| 43 | 4.3.1.2 | 经营分析 | 20d | 2026-04-28 | 2026-05-25 |  | waiting |
| 44 | 4.3.1.3 | 经营诊断 | 22d | 2026-05-26 | 2026-06-24 |  | waiting |
| 45 | 4.3.2 | **一体化决策组织平台** | 17d | 2026-03-18 | 2026-04-09 | 20% |  |
| 46 | 4.3.2.1 | 组织结构体系 | 8d | 2026-03-18 | 2026-03-27 | 20% | suspended |
| 47 | 4.3.2.2 | 人员 | 9d | 2026-03-30 | 2026-04-09 | 20% | suspended |
| 48 | 4.3.3 | **规范化协作机制平台** | 59d | 2026-04-06 | 2026-06-25 |  |  |
| 49 | 4.3.3.1 | 计划会商 | 59d | 2026-04-06 | 2026-06-25 |  |  |
| 50 | 4.3.3.2 | 策略执行 | 59d | 2026-04-06 | 2026-06-25 |  |  |
| 51 | 4.3.3.3 | 过程管控 | 59d | 2026-04-06 | 2026-06-25 |  |  |
| 52 | 4.3.3.4 | 评价考核 | 59d | 2026-04-06 | 2026-06-25 |  |  |

Notes:
- 31: 需要增加接入MDM、4A平台
- 33: 数据库设计缺失

| ID | WBS | Task | Duration | Start | Finish | Complete | Status |
| --- | --- | --- | --- | --- | --- | --- | --- |
| 53 | 4.3.4 | **模块化管理指标平台** | 65d | 2026-03-26 | 2026-06-24 |  |  |
| 54 | 4.3.4.1 | 数据获取 | 65d | 2026-03-26 | 2026-06-24 |  |  |
| 55 | 4.3.4.2 | 指标库 | 65d | 2026-03-26 | 2026-06-24 |  |  |
| 56 | 4.3.4.3 | 指标共享底座 | 65d | 2026-03-26 | 2026-06-24 |  |  |
| 57 | 4.3.4.4 | 数据管理 | 25d | 2026-03-26 | 2026-04-29 |  |  |
| 58 | 4.3.4.5 | **数据应用** | 9d | 2026-04-20 | 2026-04-30 |  | waiting |
| 59 | 4.3.4.5.1 | 智能报表 | 1d | 2026-04-20 | 2026-04-20 |  | waiting |
| 60 | 4.3.4.5.2 | 智能报告 | 1d | 2026-04-30 | 2026-04-30 |  | waiting |
| 61 | 4.3.4.5.3 | 智能问数 | 1d | 2026-04-30 | 2026-04-30 |  | waiting |
| 62 | 4.3.4.5.4 | 数据可视化面板 | 1d | 2026-04-30 | 2026-04-30 |  | waiting |
| 63 | 4.3.5 | **通用功能** | 9d | 2026-03-25 | 2026-04-06 | 100% |  |
| 64 | 4.3.5.1 | 流程管控 | 4d | 2026-03-25 | 2026-03-30 | 100% | suspended |
| 65 | 4.3.5.2 | 权限管理 | 5d | 2026-03-31 | 2026-04-06 | 100% | suspended |
| 66 | 4.3.6 | **移动端APP** | 25d | 2026-06-29 | 2026-07-31 |  |  |
| 67 | 4.3.6.1 | 电量管理 | 8d | 2026-06-29 | 2026-07-08 |  |  |
| 68 | 4.3.6.2 | 市场交易 | 9d | 2026-07-09 | 2026-07-21 |  |  |
| 69 | 4.3.6.3 | 行业对标 | 8d | 2026-07-22 | 2026-07-31 |  |  |
| 70 | 5 | **测试** | 92d | 2026-05-07 | 2026-09-11 |  |  |
| 71 | 5.1 | **系统测试** | 82d | 2026-05-07 | 2026-08-28 |  |  |
| 72 | 5.1.1 | 功能测试 | 78d | 2026-05-07 | 2026-08-24 |  |  |
| 73 | 5.1.2 | 性能测试 | 15d | 2026-07-20 | 2026-08-07 |  |  |
| 74 | 5.1.3 | 集成测试 | 15d | 2026-07-27 | 2026-08-14 |  |  |
| 75 | 5.1.4 | 安全测试 | 10d | 2026-08-17 | 2026-08-28 |  |  |
| 76 | 5.2 | UAT验收测试 | 6d | 2026-08-31 | 2026-09-07 |  |  |
| 77 | 5.3 | 验收报告 | 4d | 2026-09-08 | 2026-09-11 |  |  |

| ID | WBS | Task | Duration | Start | Finish |
| --- | --- | --- | --- | --- | --- |
| 78 | 6 | **上线试运行** | 23d | 2026-08-24 | 2026-09-23 |
| 79 | 6.1 | 试运行 | 23d | 2026-08-24 | 2026-09-23 |
| 80 | 6.2 | 用户培训 | 10d | 2026-08-24 | 2026-09-04 |
| 81 | 7 | **项目验收** | 18d | 2026-09-07 | 2026-09-30 |
| 82 | 7.1 | 验收材料准备 | 8d | 2026-09-07 | 2026-09-16 |
| 83 | 7.2 | 项目验收评审 | 10d | 2026-09-17 | 2026-09-30 |
